| uid | name | start | finish |
| --- | --- | --- | --- |
| 1 | CR-751(GRS JSON スキーマの自己説明)の適用 | 2026-10-15T02:00:00 | 2026-10-15T03:04:00 |
| 50 | 試験待ち 6 行(DFC-2449〜2466)の仕様だけを読む試験の作成 | 2026-10-15T02:15:00 | 2026-10-15T02:32:00 |
| 51 | 1 枚のチェックリスト(user-checklist-2026-10-15)の起草 | 2026-10-15T02:15:00 | 2026-10-15T02:41:00 |
| 52 | CR-740・752・753(覚え置き・呼び方・Ctrl の写し)の起草 | 2026-10-15T02:15:00 | 2026-10-15T03:40:00 |
| 53 | CR-758(依存線とマーカーの干渉解消)の起草 | 2026-10-15T02:15:00 | 2026-10-15T03:40:00 |
| 3 | 表の窓の聞き取り(DFC-2600〜2615)の記録 | 2026-10-15T02:20:00 | 2026-10-15T03:53:00 |
| 5 | 工程の強制の道具(push の見張り・検査 78〜80)の実装 | 2026-10-15T02:20:00 | 2026-10-15T04:13:00 |
| 54 | CR-754〜757(設定パネル・タイムゾーン・ダミー実績・全体シフト)の起草 | 2026-10-15T02:20:00 | 2026-10-15T05:57:00 |
| 6 | JDG-2071(仕様書が正)の権威の調査 | 2026-10-15T02:40:00 | 2026-10-15T04:09:00 |
| 55 | 紹介頁(docs/about)のダーク切替の実装 | 2026-10-15T02:40:00 | 2026-10-15T04:05:00 |
| 56 | プロジェクト計画(project-plan)の初版と直し | 2026-10-15T03:44:00 | 2026-10-15T05:09:00 |
| 4 | CR-753(Ctrl ドラッグの写しを移動と同じ所へ)の実装 | 2026-10-15T04:13:00 | 2026-10-15T05:53:00 |
| 8 | CR-752(公開名の呼び方と直す案の行の鍵)の仕様反映 | 2026-10-15T04:55:00 | 2026-10-15T06:15:00 |
| 57 | STOP の印の仕分け(DFC-2647)の調べ | 2026-10-15T05:09:00 | 2026-10-15T05:36:00 |
| 33 | CR-759〜762(表の窓)の起草 | 2026-10-15T05:02:00 | 2026-10-15T07:08:00 |
| 58 | CR-765〜768(仕様が正の原稿)の起草 | 2026-10-15T05:09:00 | 2026-10-15T06:07:00 |
| 60 | プロジェクト計画(project-plan)の更新と前の計画の重ね | 2026-10-15T07:12:00 | 2026-10-15T07:36:00 |
| 80 | CR-763/764(飛び先のマーカーほか)の起草の仕上げ | 2026-10-15T03:53:00 | 2026-10-15T07:30:00 |
| 7 | CR-740(範囲選択中の下の絵の覚え置き)の実装 | 2026-10-15T04:13:00 | 2026-10-15T07:21:00 |
| 9 | CR-758(依存線とマーカーの干渉解消)の実装 | 2026-10-15T04:13:00 | 2026-10-15T07:58:00 |
| 23 | CR-757(全体日程のシフト)の実装 | 2026-10-15T05:58:00 | 2026-10-15T07:59:00 |
| 61 | CR-769〜771(英語の慣習)の調べ | 2026-10-15T06:15:00 | 2026-10-15T07:54:00 |
| 90 | CR-769〜771(英語の慣習)の起草と答えの記録 | 2026-10-15T07:54:00 | 2026-10-15T08:25:00 |
| 22 | CR-756(分単位のダミー実績)の実装 | 2026-10-15T08:09:00 | 2026-10-15T11:04:00 |
| 21 | CR-755(タイムゾーンの固定の時差と略称)の実装 | 2026-10-15T08:09:00 | 2026-10-15T11:04:00 |
| 65 | CR-762(列の境目を引く幅の追従)の実装 | 2026-10-15T08:25:00 | 2026-10-15T11:04:00 |
| 72 | CR-761(列のフィルタの一覧)の実装 | 2026-10-15T08:46:00 | 2026-10-15T11:04:00 |
| 119 | DFC-2765(変更前の輪郭が日に丸まる)の直し | 2026-10-15T08:25:00 | 2026-10-15T11:04:00 |
| 81 | CR-763(飛び先の輪のバラ色と角丸)の実装 | 2026-10-15T08:25:00 | 2026-10-15T11:04:00 |
| 67 | CR-759(修正案の表の語と推奨の一括採用)の実装 | 2026-10-15T08:25:00 | 2026-10-15T11:05:00 |
| 69 | CR-760(表のステータスと種別の列)の実装 | 2026-10-15T08:25:00 | 2026-10-15T11:05:00 |
| 120 | CR-764(診断マーカーを押すとレポートの行)の実装 | 2026-10-15T11:05:00 | 2026-10-15T13:04:00 |
| 78 | CR-765(Agent API の呼び方の原稿)の実装 | 2026-10-15T11:05:00 | 2026-10-15T13:24:00 |
| 88 | CR-768(保存の媒体の型)の A・B の実装 | 2026-10-15T12:19:00 | 2026-10-15T13:26:00 |
| 25 | CR-754(日付の欄と設定パネル)の実装 | 2026-10-15T10:28:00 | 2026-10-15T13:55:00 |
| 83 | CR-766(文書の命令が運ぶ値の原稿)の実装 | 2026-10-15T12:19:00 | 2026-10-15T14:34:00 |
| 91 | CR-769(保存する名と連携の名の英語)の実装 | 2026-10-15T14:37:00 | 2026-10-15T16:06:00 |
| 121 | CR-770(画面の英語の語)の実装 | 2026-10-15T15:44:00 | 2026-10-15T17:23:00 |
| 122 | DFC-2309(開けないファイルの通知)の直し | 2026-10-15T16:06:00 | 2026-10-15T17:20:00 |
| 98 | CR-771(コードの公開名と配る物の名)の実装 | 2026-10-15T17:23:00 | 2026-10-15T23:57:00 |
| 97 | 裁定待ち 約 15 問(CR-754・759〜770・DFC-2880)への答え | 2026-10-15T22:30:00 | 2026-10-16T00:03:00 |
| 123 | 紹介頁(docs/about)の表紙の .md の仕様へのリンクと見本 | 2026-10-15T17:23:00 | 2026-10-15T23:57:00 |
| 112 | DFC-2880(出荷見本が開けない)の直し | 2026-10-15T17:23:00 | 2026-10-15T23:57:00 |
| 103 | CR-773(利用者が答えた 6 つの裁定)の実装 | 2026-10-16T00:01:00 | 2026-10-16T00:46:00 |
| 124 | CR-772(タスクグループを 1 回のドラッグで)の実装 | 2026-10-16T00:01:00 | 2026-10-16T03:52:00 |
| 100 | dist の作り直し | 2026-10-16T01:22:00 | 2026-10-16T01:44:00 |
| 125 | CR-774(深さの上限で問う)の起草と仕様の段 | 2026-10-16T03:57:00 | 2026-10-16T04:42:00 |
| 101 | 作業木の GT-2(MSPDI のスキーマを写して) | 2026-10-16T03:57:00 | 2026-10-16T05:00:00 |
| 130 | CR-774(深さの上限で問う)の仕様の段の合流 | 2026-10-16T04:42:00 | 2026-10-16T05:10:00 |
| 39 | 根の一括の GT-2 と push | 2026-10-16T05:00:00 | 2026-10-16T05:35:00 |
| 138 | 紹介頁(docs/about)のタブ 05「拡張の試し」・@pure の注・DFC-2890/2891 | 2026-10-16T05:30:00 | 2026-10-16T05:42:00 |
| 131 | CR-774(深さの上限で問う)の実装 | 2026-10-16T05:30:00 | 2026-10-16T06:40:00 |
| 132 | CR-774(深さの上限で問う)の仕様だけを読む試験 | 2026-10-16T05:30:00 | 2026-10-16T06:06:00 |
| 143 | CR-774(深さの上限で問う)と紹介頁の入った先端の GT-2 と push | 2026-10-16T06:40:00 | 2026-10-16T07:15:00 |
| 127 | CR-774(深さの上限で問う)と紹介頁を見て tier B を選ぶ | 2026-10-16T07:15:00 | 2026-10-16T07:25:00 |
| 137 | CR-775(Alt の寄せは離した時点で読む, DFC-2700〜2702)の実装 | 2026-10-16T07:25:00 | 2026-10-16T08:55:00 |
| 107 | CR-776(命令の値 19 を列の名へ, JDG-2361)の実装 | 2026-10-16T07:25:00 | 2026-10-16T08:55:00 |
| 134 | CR-777(コメントボックスの線先の吸い付き, DFC-2911)の実装 | 2026-10-16T07:25:00 | 2026-10-16T08:55:00 |
| 136 | CR-778(PI-39 の消えた型, DFC-2903)の実装 | 2026-10-16T07:25:00 | 2026-10-16T08:55:00 |
| 114 | DFC-2870(実績期間の欄の幅)の直し | 2026-10-16T07:25:00 | 2026-10-16T08:55:00 |
| 135 | DFC-2912(箱を引いて離しても変わらない操作)の調べと直し | 2026-10-16T07:25:00 | 2026-10-16T08:55:00 |
| 113 | DFC-557(MSPDI の拒否が黙る)の直し | 2026-10-16T07:25:00 | 2026-10-16T08:55:00 |
| 110 | DFC-2856(形の外れた命令の束を断る)の実装 | 2026-10-16T07:25:00 | 2026-10-16T08:55:00 |
| 43 | tier B の入った先端の GT-2 と push・Pages | 2026-10-16T08:55:00 | 2026-10-16T18:35:00 |
| 148 | CR-780(変えなかった書き込みは未保存を立てない, FR-100)の実装 | 2026-10-16T18:35:00 | 2026-10-16T20:20:00 |
| 149 | DFC-2909(深さの上限は命令ごとに測る)の直し | 2026-10-16T18:35:00 | 2026-10-16T20:20:00 |
| 150 | CR-781(窓が開いているときの遅延診断は窓だけを閉じる)の実装 | 2026-10-16T18:35:00 | 2026-10-16T20:20:00 |
| 151 | CR-780・781(未保存と遅延診断の窓)と DFC-2909 の入った先端の GT-2 と push | 2026-10-16T20:20:00 | 2026-10-16T20:45:00 |
| 37 | 1 枚のチェックリストへ CR-780(未保存)の 5 節・CR-781・DFC-2909 の行を足す | 2026-10-16T20:20:00 | 2026-10-16T20:45:00 |
| 152 | DFC-2950(CR-777 が上げ忘れた形式の版を上げる)の直しと push | 2026-10-16T20:52:00 | 2026-10-16T22:30:00 |

| uid | name | start | finish | milestone |
| --- | --- | --- | --- | --- |
| 41 | 1 枚のチェックリストを実物で触って報告する | 2026-10-16T21:00:00 | 2026-10-17T01:00:00 |  |
| 153 | 1 枚のチェックリストの 5〜14 行の Playwright での確かめ | 2026-10-16T22:30:00 | 2026-10-17T01:00:00 |  |
| 42 | DFC-2870(実績期間の欄の幅)の直し直しと CR-783(時の段で引いて作る)の実装 | 2026-10-16T22:08:00 | 2026-10-17T04:47:00 |  |
| 154 | CR-782(コメントボックスの線先が出てパネルが文字を受ける)の実装 | 2026-10-16T22:08:00 | 2026-10-17T04:59:00 |  |
| 155 | 規則 04 の 7 節と test_route(合流の後に試験を選ぶ, JDG-2419) | 2026-10-17T01:00:00 | 2026-10-17T04:00:00 |  |
| 156 | 利用者の報告(DFC-2960〜2973・JDG-2460〜2475)の仕分け | 2026-10-17T04:00:00 | 2026-10-17T05:18:00 |  |
| 157 | 席 1・3(DFC-2870・CR-783・CR-782)の合流 | 2026-10-17T05:30:00 | 2026-10-17T06:00:00 |  |
| 158 | test_route が選ぶ試験(PERF・e2e・探り針) | 2026-10-17T06:00:00 | 2026-10-17T07:00:00 |  |
| 159 | 席 1・3 の入った先端の GT-2 と push | 2026-10-17T07:00:00 | 2026-10-17T09:00:00 |  |
| 160 | 不具合の聞き取り(実績を入力する UI が変になった) | 2026-10-17T05:30:00 | 2026-10-17T07:30:00 |  |
| 161 | 聞き取りで出た不具合(実績を入力する UI)の直し | 2026-10-17T07:30:00 | 2026-10-17T11:30:00 |  |
| 162 | 残りの行(未確認 2 行と DFC-2870)を実物で確かめる | 2026-10-17T09:00:00 | 2026-10-17T10:00:00 |  |
| 163 | DFC-2960・2961(タスクグループを運ぶ手掛かり, 束 A)の実装 | 2026-10-17T06:00:00 | 2026-10-17T10:00:00 |  |
| 164 | DFC-2962〜2965・2970(パネルの幅と設定の語, 束 B)の実装 | 2026-10-17T06:00:00 | 2026-10-17T14:00:00 |  |
| 165 | DFC-2972(担当の欄, 束 C)の実装 | 2026-10-17T14:00:00 | 2026-10-17T22:00:00 |  |
| 166 | DFC-2973・2968(最前面に配置, 束 D)の実装 | 2026-10-17T06:00:00 | 2026-10-17T10:00:00 |  |
| 167 | DFC-2966・2967・2969(文書の形と実績の表, 束 E)の仕様と実装 | 2026-10-17T06:00:00 | 2026-10-17T10:00:00 |  |
| 168 | DFC-2971(パネルの値の全点, 束 F)の試験 | 2026-10-17T22:00:00 | 2026-10-18T06:00:00 |  |
| 139 | 最後の GT-2 と push | 2026-10-18T06:00:00 | 2026-10-18T08:00:00 |  |
| 140 | α 版(10/19)のお披露目 | 2026-10-19T09:00:00 | 2026-10-19T09:00:00 | True |
| 147 | 週の使用量の戻り(水 19:00)と仕事の再開 | 2026-10-21T19:00:00 | 2026-10-21T19:00:00 | True |
| 85 | CR-767(状態機械の原稿)の波 1 の実装 | 2026-10-21T19:00:00 | 2026-10-22T00:30:00 |  |
| 86 | CR-767(状態機械の原稿)の波 2 の実装 | 2026-10-22T00:30:00 | 2026-10-22T06:00:00 |  |
| 87 | CR-767(状態機械の原稿)の合流と確かめ | 2026-10-22T06:00:00 | 2026-10-22T06:30:00 |  |
| 104 | CR-768(保存の媒体の型)の C と CM-27 の注の実装 | 2026-10-22T06:30:00 | 2026-10-22T10:30:00 |  |
| 105 | CR-768(保存の媒体の型)の C の合流と確かめ | 2026-10-22T10:30:00 | 2026-10-22T11:00:00 |  |
| 15 | T-064(公開の名 約 479 の呼び出し形, DFC-2640)の書き起こしと再検討 | 2026-10-21T19:00:00 | 2026-10-22T07:00:00 |  |
| 77 | 古い STOP の印 16 件の除去 | 2026-10-22T07:00:00 | 2026-10-22T11:00:00 |  |
| 115 | edgeOf(重複した関数)の 1 つへの寄せ | 2026-10-21T19:00:00 | 2026-10-21T21:00:00 |  |
| 116 | NOT_STORED_DUMMY_SIZES(手で持つ寸法)の生成への置き換え | 2026-10-21T21:00:00 | 2026-10-21T23:00:00 |  |
| 117 | baseChangeCommandOf(名の複数形)の言い直し | 2026-10-21T23:00:00 | 2026-10-22T01:00:00 |  |
| 118 | DFC-2646〜2648(STOP の仕分けで出た 3 行)の直し | 2026-10-21T19:00:00 | 2026-10-21T23:00:00 |  |
| 11 | 未検討 約 45 行(DFC-611・2560〜2569・2690〜2699 ほか)のトリアージ | 2026-10-21T23:00:00 | 2026-10-22T03:00:00 |  |
| 32 | トリアージで出た直しの実装 | 2026-10-22T03:00:00 | 2026-10-22T11:00:00 |  |
| 18 | 仕様待ちの残り(DFC-560・631・1063〜1073 ほか)の CR の起草 | 2026-10-21T19:00:00 | 2026-10-21T23:00:00 |  |
| 35 | 仕様待ちの残りの CR の実装 | 2026-10-21T23:00:00 | 2026-10-22T07:00:00 |  |
| 12 | 罠の束(DFC-544・547・548・549)の実装 | 2026-10-22T11:00:00 | 2026-10-22T15:00:00 |  |
| 20 | 実装待ちの残り(DFC-464・532〜562 ほか)の実装 | 2026-10-22T15:00:00 | 2026-10-22T23:00:00 |  |
| 19 | DFC-730(GP-1)の実装 | 2026-10-22T07:00:00 | 2026-10-22T09:00:00 |  |
| 17 | 試験待ち 11 行(DFC-550・567・641 ほか)の仕様だけを読む試験 | 2026-10-22T01:00:00 | 2026-10-22T05:00:00 |  |
| 13 | 用語集の JSON 化(DFC-2175)の仕様と実装 | 2026-10-22T05:00:00 | 2026-10-22T09:00:00 |  |
| 36 | 全部の合流と台帳の締め | 2026-10-22T23:00:00 | 2026-10-23T00:00:00 |  |
| 141 | tier C の入った一括の GT-2 と push | 2026-10-23T00:00:00 | 2026-10-23T02:00:00 |  |
| 27 | W4(アダプタ層の分割)の前半 CR-578→579→580 の実装 | 2026-10-23T02:00:00 | 2026-10-23T10:00:00 |  |
| 28 | W4 の後半(CR-581 の後半と properties-panel)の実装 | 2026-10-23T10:00:00 | 2026-10-23T18:00:00 |  |
| 29 | W5(異常系 DFC-586 ほか)の仕様 | 2026-10-23T18:00:00 | 2026-10-24T02:00:00 |  |
| 30 | W5(異常系 DFC-922 ほか)の実装と試験 | 2026-10-24T02:00:00 | 2026-10-24T10:00:00 |  |
| 31 | W4・W5 の合流と GT-2・push | 2026-10-24T10:00:00 | 2026-10-24T12:00:00 |  |
| 45 | CR-695(対話欄の廃止)の実装 | 2026-10-23T02:00:00 | 2026-10-23T10:00:00 |  |
| 46 | CR-697(取次が口と鍵を覚える)の実装 | 2026-10-23T02:00:00 | 2026-10-23T10:00:00 |  |
| 47 | DFC-2214・2215(AM-19 の説明)の仕様と実装 | 2026-10-23T02:00:00 | 2026-10-23T06:00:00 |  |
| 44 | 正式公開の判断(JDG-1740) | 2026-10-24T12:00:00 | 2026-10-24T12:00:00 | True |
| 48 | AI 連携の合流と GT-2・push | 2026-10-24T12:00:00 | 2026-10-24T14:00:00 |  |
| 49 | 計画の終わり | 2026-10-24T14:00:00 | 2026-10-24T14:00:00 | True |
